# Opracowanie strony internetowej

Schedule from MS Project, 2024-03-25 to 2024-06-26, status date 2024-05-06, 5 hours a day, costs in zł.

## Calendars

- Standardowy: Mon-Fri 09:00-13:00, 14:00-18:00; Sat-Sun off.

## Resources

| Resource | Rate |
| --- | --- |
| Programista | 80 |
| Kierownik Projektu | 100 |
| Administrator Baz Danych | 100 |
| Tester Oprogramowania | 120 |
| Specjalista ds. Zapewnienia Jakości | 80 |

## Schedule

| ID | WBS | Task | Duration | Start | Finish | Predecessors | Total slack | Free slack | Resources | Work | Cost |
| --- | --- | --- | --- | --- | --- | --- | --- | --- | --- | --- | --- |
| 1 | 1 | **Iteracja 1 - Definicja wymagań** | 8d | 2024-03-25 | 2024-03-29 |  | 0.6d | 0d | Kierownik Projektu; Administrator Baz Danych; Programista; Tester Oprogramowania | 488h | 48,480 |
| 2 | 1.1 | **Raporty** | 8d | 2024-03-25 | 2024-03-29 |  | 0.6d |  | Kierownik Projektu | 328h | 32,480 |
| 3 | 1.1.1 | **Specyfikacje funkcjonalne** | 8d | 2024-03-25 | 2024-03-29 |  | 0.6d |  | Kierownik Projektu; Administrator Baz Danych; Programista; Tester Oprogramowania | 288h | 28,480 |
| 4 | 1.1.1.1 | **Zbierz wymagania użytkownika** | 1.6d | 2024-03-25 | 2024-03-25 |  | 0.6d | 0d | Kierownik Projektu; Administrator Baz Danych; Programista | 72h | 6,880 |
| 5 | 1.1.1.1.1 | Zdefiniuj elementy danych | 1.6d | 2024-03-25 | 2024-03-25 |  | 0.6d | 0d | Kierownik Projektu; Administrator Baz Danych | 16h | 1,600 |
| 6 | 1.1.1.1.2 | Zdefiniuj częstotliwość wywoływania strony | 1.6d | 2024-03-25 | 2024-03-25 | 5SS | 0.6d | 0d | Kierownik Projektu; Administrator Baz Danych; Programista | 24h | 2,240 |
| 7 | 1.1.1.1.3 | Zdefiniuj odbiorców | 1.6d | 2024-03-25 | 2024-03-25 | 6SS | 0.6d |  | Kierownik Projektu | 8h | 800 |
| 8 | 1.1.1.2 | Raporty z wykonanych projektów | 1.6d | 2024-03-26 | 2024-03-26 | 4 | 0.6d | 0d | Kierownik Projektu | 8h | 800 |
| 9 | 1.1.1.3 | Zdefiniuj raport z zespołem projektowym | 1.6d | 2024-03-27 | 2024-03-27 | 8 | 0.6d | 0d | Kierownik Projektu; Administrator Baz Danych; Programista; Tester Oprogramowania | 32h | 3,200 |
| 10 | 1.1.1.4 | Dostarcz ostateczne specyfikacje funkcjonalne | 1.6d | 2024-03-28 | 2024-03-28 | 9 | 0.6d | 0d | Kierownik Projektu | 8h | 800 |
| 11 | 1.1.1.5 | Uzyskaj akceptację użytkownika | 1.6d | 2024-03-29 | 2024-03-29 | 10 | 0.6d |  | Kierownik Projektu | 8h | 800 |
| 14 | 2 | **Iteracja 2 - Baza danych** | 44.2d? | 2024-04-01 | 2024-05-08 | 1 | 0.2d | 0d | Administrator Baz Danych; Kierownik Projektu; Programista; Tester Oprogramowania; Specjalista ds. Zapewnienia Jakości | 5143h | 509,840 |
| 15 | 2.1 | **Projektowanie** | 30.4d | 2024-04-01 | 2024-04-25 |  | 0.6d | 0d | Administrator Baz Danych; Kierownik Projektu; Programista; Tester Oprogramowania | 3776h | 377,600 |
| 16 | 2.1.1 | **Interfejs użytkownika internetowego** | 30.4d | 2024-04-01 | 2024-04-25 |  | 0.6d |  | Administrator Baz Danych; Kierownik Projektu; Programista; Tester Oprogramowania | 1712h | 171,200 |
| 17 | 2.1.1.1 | **Specyfikacja techniczna** | 30.4d | 2024-04-01 | 2024-04-25 |  | 0.6d |  | Administrator Baz Danych; Kierownik Projektu; Programista; Tester Oprogramowania | 1104h | 110,400 |
| 18 | 2.1.1.1.1 | Opracuj specyfikacje techniczne | 8d | 2024-04-01 | 2024-04-05 |  | 0.6d | 0d | Administrator Baz Danych; Kierownik Projektu | 80h | 8,000 |
| 19 | 2.1.1.1.2 | Zapoznaj się z specyfikacjami technicznymi z zespołem projektowym | 19.2d | 2024-04-08 | 2024-04-23 | 18 | 0.6d | 0d | Administrator Baz Danych; Kierownik Projektu; Programista; Tester Oprogramowania | 384h | 38,400 |
| 20 | 2.1.1.1.3 | Uzyskaj akceptację zespołu | 3.2d | 2024-04-24 | 2024-04-25 | 19 | 0.6d | 0d | Administrator Baz Danych; Kierownik Projektu | 32h | 3,200 |
| 21 | 2.1.2 | **Baza danych SQL** | 30.4d | 2024-04-01 | 2024-04-25 |  | 0.6d |  | Administrator Baz Danych; Kierownik Projektu; Programista; Tester Oprogramowania | 1456h | 145,600 |
| 22 | 2.1.2.1 | **Specyfikacja techniczna** | 30.4d | 2024-04-01 | 2024-04-25 |  | 0.6d |  | Administrator Baz Danych; Kierownik Projektu; Programista; Tester Oprogramowania | 848h | 84,800 |
| 23 | 2.1.2.1.1 | Opracuj specyfikacje techniczne | 8d | 2024-04-01 | 2024-04-05 | 18SS | 13.4d | 0d | Administrator Baz Danych; Kierownik Projektu | 80h | 8,000 |
| 24 | 2.1.2.1.2 | Zapoznaj się z specyfikacjami technicznymi z zespołem projektowym | 6.4d | 2024-04-08 | 2024-04-11 | 23 | 13.4d | 12.8d | Administrator Baz Danych; Kierownik Projektu; Programista; Tester Oprogramowania | 128h | 12,800 |
| 25 | 2.1.2.1.3 | Uzyskaj akceptację zespołu | 3.2d | 2024-04-24 | 2024-04-25 | 20FF, 24 | 0.6d |  | Administrator Baz Danych; Kierownik Projektu | 32h | 3,200 |
| 26 | 2.2 | **Implementacja** | 6.4d | 2024-04-26 | 2024-05-01 | 15 | 0.6d | 0.4d | Administrator Baz Danych; Kierownik Projektu; Programista; Tester Oprogramowania; Specjalista ds. Zapewnienia Jakości | 332h | 32,800 |
| 27 | 2.2.1 | **Baza danych SQL** | 6.4d | 2024-04-26 | 2024-05-01 |  | 0.6d |  | Administrator Baz Danych; Kierownik Projektu; Programista; Tester Oprogramowania | 184h | 18,400 |
| 28 | 2.2.1.1 | Identyfikuj relacje | 1.6d | 2024-04-26 | 2024-04-26 |  | 0.6d | 0d | Administrator Baz Danych | 8h | 800 |
| 29 | 2.2.1.2 | Tworzenie tabel bazy danych | 1.6d | 2024-04-29 | 2024-04-29 | 28 | 0.6d | 0d | Administrator Baz Danych | 8h | 800 |
| 30 | 2.2.1.3 | Przegląd tabel z zespołem projektowym | 1.6d | 2024-04-30 | 2024-04-30 | 29 | 0.6d | 0d | Administrator Baz Danych; Kierownik Projektu; Programista; Tester Oprogramowania | 32h | 3,200 |
| 31 | 2.2.1.4 | Uzyskaj akceptację zespołu | 1.6d | 2024-05-01 | 2024-05-01 | 30 | 0.6d |  | Administrator Baz Danych | 8h | 800 |

| ID | WBS | Task | Duration | Start | Finish | Predecessors | Total slack | Free slack | Resources | Work | Cost |
| --- | --- | --- | --- | --- | --- | --- | --- | --- | --- | --- | --- |
| 32 | 2.3 | **Zapewnienie jakości** | 5d? | 2024-05-02 | 2024-05-07 | 26 | 0.2d |  | Specjalista ds. Zapewnienia Jakości | 48h | 3,840 |
| 33 | 2.3.1 | **Baza danych SQL** | 5d? | 2024-05-02 | 2024-05-07 |  | 0.2d |  | Specjalista ds. Zapewnienia Jakości | 32h | 2,560 |
| 34 | 2.3.1.1 | Weryfikuj elementy projektu / danych | 1.6d? | 2024-05-02 | 2024-05-03 |  | 0.2d | 0d | Specjalista ds. Zapewnienia Jakości | 8h | 640 |
| 35 | 2.3.1.2 | Zweryfikuj relacje | 1.6d? | 2024-05-03 | 2024-05-07 | 34 | 0.2d | 0d | Specjalista ds. Zapewnienia Jakości | 8h | 640 |
| 36 | 2.4 | **Raporty** | 2d | 2024-05-07 | 2024-05-08 |  | 0.2d |  | Specjalista ds. Zapewnienia Jakości | 16h | 1,280 |
| 37 | 2.4.1 | Sprawdź projekt i funkcjonalność | 1.6d | 2024-05-07 | 2024-05-08 | 35 | 0.2d |  | Specjalista ds. Zapewnienia Jakości | 8h | 640 |
| 41 | 3 | **Iteracja 3 - Komunikacja między modułami** | 15.8d | 2024-05-08 | 2024-05-22 | 14 | 0d |  | Administrator Baz Danych; Kierownik Projektu; Programista; Specjalista ds. Zapewnienia Jakości; Tester Oprogramowania | 965h | 93,360 |
| 42 | 3.1 | **Projektowanie** | 6.2d | 2024-05-08 | 2024-05-14 |  | 0d |  | Kierownik Projektu; Programista; Administrator Baz Danych; Tester Oprogramowania | 344h | 33,760 |
| 43 | 3.1.1 | **Interfejsy podsystemów** | 6.2d | 2024-05-08 | 2024-05-14 |  | 0d |  | Kierownik Projektu; Programista; Administrator Baz Danych; Tester Oprogramowania | 220h | 21,360 |
| 44 | 3.1.1.1 | **Określ elementy importu / eksportu danych** | 1.6d | 2024-05-08 | 2024-05-09 |  | 1d | 0d | Administrator Baz Danych; Kierownik Projektu; Programista; Tester Oprogramowania | 56h | 5,280 |
| 45 | 3.1.1.1.1 | Zdefiniuj potrzeby użytkownika | 1.6d | 2024-05-08 | 2024-05-09 |  | 1d | 0d | Kierownik Projektu; Programista | 16h | 1,440 |
| 46 | 3.1.1.1.2 | Zdefiniuj potrzeby informatyczne | 1.6d | 2024-05-08 | 2024-05-09 | 45SS | 1d |  | Programista | 8h | 640 |
| 47 | 3.1.1.2 | Interfejsy projektowe | 1.6d | 2024-05-09 | 2024-05-10 | 44 | 1d | 0d | Programista | 8h | 640 |
| 48 | 3.1.1.3 | Uzyskaj akceptację zespołu | 2.4d | 2024-05-10 | 2024-05-14 | 47 | 0d |  | Administrator Baz Danych; Programista; Specjalista ds. Zapewnienia Jakości; Tester Oprogramowania | 32h | 3,040 |
| 49 | 3.2 | **Implementacja** | 4.8d | 2024-05-14 | 2024-05-17 | 42 | 0d |  | Programista; Administrator Baz Danych; Kierownik Projektu; Tester Oprogramowania; Specjalista ds. Zapewnienia Jakości | 268h | 26,240 |
| 50 | 3.2.1 | **Interfejsy międzymodułowe** | 4.8d | 2024-05-14 | 2024-05-17 |  | 0d |  | Programista; Administrator Baz Danych; Kierownik Projektu; Tester Oprogramowania; Specjalista ds. Zapewnienia Jakości | 158h | 15,520 |
| 51 | 3.2.1.1 | Zbuduj interfejsy | 1.6d | 2024-05-14 | 2024-05-15 |  | 0d |  | Programista | 8h | 640 |
| 52 | 3.2.1.2 | Przeprowadź test jednostkowy funkcji importu / eksportu | 1.6d | 2024-05-15 | 2024-05-16 | 51 | 0d |  | Tester Oprogramowania | 8h | 960 |
| 53 | 3.2.1.3 | Uzyskaj akceptację zespołu | 1.6d | 2024-05-16 | 2024-05-17 | 52 | 0d |  | Administrator Baz Danych; Kierownik Projektu; Programista; Tester Oprogramowania | 32h | 3,200 |
| 54 | 3.3 | **Zapewnienie jakości** | 4.8d | 2024-05-17 | 2024-05-22 | 49 | 0d |  | Specjalista ds. Zapewnienia Jakości | 48h | 3,840 |
| 55 | 3.3.1 | **Interfejsy** | 2d | 2024-05-17 | 2024-05-20 |  | 0d |  | Specjalista ds. Zapewnienia Jakości | 16h | 1,280 |
| 56 | 3.3.1.1 | Sprawdź projekt i funkcjonalność | 1.6d | 2024-05-17 | 2024-05-20 |  | 0d |  | Specjalista ds. Zapewnienia Jakości | 8h | 640 |
| 57 | 3.3.2 | **Raporty** | 2d | 2024-05-21 | 2024-05-22 | 55 | 0d |  | Specjalista ds. Zapewnienia Jakości | 16h | 1,280 |
| 58 | 3.3.2.1 | Sprawdź projekt i funkcjonalność | 1.6d | 2024-05-21 | 2024-05-22 |  | 0d |  | Specjalista ds. Zapewnienia Jakości | 8h | 640 |

| ID | WBS | Task | Duration | Start | Finish | Predecessors | Total slack | Free slack | Resources | Work | Cost |
| --- | --- | --- | --- | --- | --- | --- | --- | --- | --- | --- | --- |
| 62 | 4 | **Iteracja 4 - Interfejs użytkownika** | 19d | 2024-05-22 | 2024-06-07 | 41 | 0d |  | Administrator Baz Danych; Kierownik Projektu; Programista; Specjalista ds. Zapewnienia Jakości; Tester Oprogramowania | 1213h | 119,600 |
| 63 | 4.1 | **Projektowanie** | 6.4d | 2024-05-22 | 2024-05-28 |  | 0d |  | Administrator Baz Danych; Kierownik Projektu; Programista; Tester Oprogramowania | 472h | 47,040 |
| 64 | 4.1.1 | **Interfejs użytkownika internetowego** | 6.4d | 2024-05-22 | 2024-05-28 |  | 0d |  | Administrator Baz Danych; Kierownik Projektu; Programista; Tester Oprogramowania | 344h | 34,240 |
| 65 | 4.1.1.1 | **Specyfikacje funkcjonalne** | 6.4d | 2024-05-22 | 2024-05-28 |  | 0d |  | Administrator Baz Danych; Kierownik Projektu; Programista; Tester Oprogramowania | 216h | 21,440 |
| 66 | 4.1.1.1.1 | Utwórz makiety interfejsu użytkownika | 1.6d | 2024-05-22 | 2024-05-23 |  | 0d |  | Kierownik Projektu; Programista | 16h | 1,440 |
| 67 | 4.1.1.1.2 | Przeprowadź przegląd projektu | 1.6d | 2024-05-23 | 2024-05-24 | 66 | 0d |  | Administrator Baz Danych; Kierownik Projektu; Programista; Tester Oprogramowania | 32h | 3,200 |
| 68 | 4.1.1.1.3 | Dostarcz ostateczne specyfikacje funkcjonalne | 1.6d | 2024-05-24 | 2024-05-27 | 67 | 0d |  | Kierownik Projektu; Programista; Administrator Baz Danych; Tester Oprogramowania | 32h | 3,200 |
| 69 | 4.1.1.1.4 | Uzyskaj akceptację użytkownika | 1.6d | 2024-05-27 | 2024-05-28 | 68 | 0d |  | Kierownik Projektu | 8h | 800 |
| 70 | 4.2 | **Implementacja** | 4.8d | 2024-05-28 | 2024-05-31 | 63 | 0d |  | Programista; Administrator Baz Danych; Kierownik Projektu; Tester Oprogramowania | 248h | 24,800 |
| 71 | 4.2.1 | **Interfejs WWW** | 4.8d | 2024-05-28 | 2024-05-31 |  | 0d |  | Programista; Administrator Baz Danych; Kierownik Projektu; Tester Oprogramowania | 152h | 15,200 |
| 72 | 4.2.1.1 | Kodowanie strony internetowej | 1.6d | 2024-05-28 | 2024-05-29 |  | 0d |  | Programista | 8h | 640 |
| 73 | 4.2.1.2 | Przeprowadzenie testów jednostkowych | 1.6d | 2024-05-28 | 2024-05-29 | 72FF | 0d |  | Tester Oprogramowania | 8h | 960 |
| 74 | 4.2.1.3 | Przejrzenie projektu / funkcjonalności strony internetowej | 1.6d | 2024-05-29 | 2024-05-30 | 73 | 0d |  | Administrator Baz Danych; Kierownik Projektu; Programista; Tester Oprogramowania | 32h | 3,200 |
| 75 | 4.2.1.4 | Uzyskaj akceptację użytkownika | 1.6d | 2024-05-30 | 2024-05-31 | 74 | 0d |  | Kierownik Projektu | 8h | 800 |
| 76 | 4.3 | **Zapewnienie jakości** | 7.8d | 2024-05-31 | 2024-06-07 | 70 | 0d |  | Specjalista ds. Zapewnienia Jakości; Tester Oprogramowania | 120h | 11,520 |
| 77 | 4.3.1 | **Interfejs WWW** | 4.8d | 2024-05-31 | 2024-06-05 |  | 0d |  | Specjalista ds. Zapewnienia Jakości; Tester Oprogramowania | 56h | 5,440 |
| 78 | 4.3.1.1 | Sprawdź projekt i funkcjonalność | 1.6d | 2024-05-31 | 2024-06-03 |  | 0d |  | Specjalista ds. Zapewnienia Jakości | 8h | 640 |
| 79 | 4.3.1.2 | Przeprowadzenie testów jednostkowych | 2.4d | 2024-06-03 | 2024-06-05 | 78 | 0.2d |  | Specjalista ds. Zapewnienia Jakości; Tester Oprogramowania | 16h | 1,600 |
| 80 | 4.3.2 | **Raporty** | 3d | 2024-06-05 | 2024-06-07 | 77 | 0.2d |  | Specjalista ds. Zapewnienia Jakości | 16h | 1,280 |
| 81 | 4.3.2.1 | Sprawdź projekt i funkcjonalność | 1.6d | 2024-06-05 | 2024-06-07 |  | 0.2d |  | Specjalista ds. Zapewnienia Jakości | 8h | 640 |
| 85 | 5 | **Iteracja 5 - Integracja modułów** | 8.6d | 2024-06-07 | 2024-06-14 | 62 | 0.2d | 0d | Administrator Baz Danych; Programista; Specjalista ds. Zapewnienia Jakości; Tester Oprogramowania | 461h | 45,200 |
| 86 | 5.1 | **Zapewnienie jakości** | 5d | 2024-06-07 | 2024-06-12 |  | 0d |  | Specjalista ds. Zapewnienia Jakości; Tester Oprogramowania | 160h | 16,000 |
| 87 | 5.1.1 | **Interfejs WWW** | 2d | 2024-06-07 | 2024-06-10 |  | 3d | 0d | Specjalista ds. Zapewnienia Jakości; Tester Oprogramowania | 32h | 3,200 |
| 88 | 5.1.1.1 | Wykonaj test integracji | 2.4d | 2024-06-07 | 2024-06-10 |  | 3d |  | Specjalista ds. Zapewnienia Jakości; Tester Oprogramowania | 16h | 1,600 |

| ID | WBS | Task | Duration | Start | Finish | Predecessors | Total slack | Free slack | Resources | Work | Cost |
| --- | --- | --- | --- | --- | --- | --- | --- | --- | --- | --- | --- |
| 89 | 5.1.2 | **Baza danych SQL** | 2d | 2024-06-07 | 2024-06-10 | 87SS | 3d | 0d | Specjalista ds. Zapewnienia Jakości; Tester Oprogramowania | 32h | 3,200 |
| 90 | 5.1.2.1 | Wykonaj test integracji | 2.4d | 2024-06-07 | 2024-06-10 |  | 3d |  | Specjalista ds. Zapewnienia Jakości; Tester Oprogramowania | 16h | 1,600 |
| 91 | 5.1.3 | **Interfejsy** | 2d | 2024-06-07 | 2024-06-10 | 89SS | 0.2d | 0d | Specjalista ds. Zapewnienia Jakości; Tester Oprogramowania | 32h | 3,200 |
| 92 | 5.1.3.1 | Wykonaj test integracji | 2.4d | 2024-06-07 | 2024-06-10 |  | 0.2d |  | Specjalista ds. Zapewnienia Jakości; Tester Oprogramowania | 16h | 1,600 |
| 93 | 5.1.4 | **Raporty** | 3d | 2024-06-10 | 2024-06-12 | 91 | 0d |  | Specjalista ds. Zapewnienia Jakości; Tester Oprogramowania | 32h | 3,200 |
| 94 | 5.1.4.1 | Raportuj test integracji | 2.4d | 2024-06-10 | 2024-06-12 |  | 0d |  | Specjalista ds. Zapewnienia Jakości; Tester Oprogramowania | 16h | 1,600 |
| 95 | 5.2 | **Implementacja** | 1.6d | 2024-06-12 | 2024-06-13 | 86 | 0d |  | Programista; Administrator Baz Danych | 32h | 2,880 |
| 96 | 5.2.1 | Wprowadzenie poprawek na podstawie wyników testów integracyjnych | 1.6d | 2024-06-12 | 2024-06-13 |  | 0d |  | Programista; Administrator Baz Danych | 16h | 1,440 |
| 97 | 5.3 | **Zapewnienie jakości** | 2d | 2024-06-13 | 2024-06-14 | 95 | 0d |  | Specjalista ds. Zapewnienia Jakości; Tester Oprogramowania | 144h | 14,400 |
| 98 | 5.3.1 | **Interfejs WWW** | 2d | 2024-06-13 | 2024-06-14 |  | 0d |  | Specjalista ds. Zapewnienia Jakości; Tester Oprogramowania | 32h | 3,200 |
| 99 | 5.3.1.1 | Wykonaj test akceptacji użytkownika | 2.4d | 2024-06-13 | 2024-06-14 |  | 0d |  | Specjalista ds. Zapewnienia Jakości; Tester Oprogramowania | 16h | 1,600 |
| 100 | 5.3.2 | **Baza danych SQL** | 2d | 2024-06-13 | 2024-06-14 | 98SS | 0d |  | Specjalista ds. Zapewnienia Jakości; Tester Oprogramowania | 32h | 3,200 |
| 101 | 5.3.2.1 | Wykonaj test akceptacji użytkownika | 2.4d | 2024-06-13 | 2024-06-14 |  | 0d |  | Specjalista ds. Zapewnienia Jakości; Tester Oprogramowania | 16h | 1,600 |
| 102 | 5.3.3 | **Interfejsy** | 2d | 2024-06-13 | 2024-06-14 | 100SS | 0d |  | Specjalista ds. Zapewnienia Jakości; Tester Oprogramowania | 32h | 3,200 |
| 103 | 5.3.3.1 | Wykonaj test akceptacji użytkownika | 2.4d | 2024-06-13 | 2024-06-14 |  | 0d |  | Specjalista ds. Zapewnienia Jakości; Tester Oprogramowania | 16h | 1,600 |
| 104 | 5.3.4 | **Raporty** | 2d | 2024-06-13 | 2024-06-14 | 102SS | 0d |  | Specjalista ds. Zapewnienia Jakości; Tester Oprogramowania | 32h | 3,200 |
| 105 | 5.3.4.1 | Raportuj test akceptacji użytkownika | 2.4d | 2024-06-13 | 2024-06-14 |  | 0d |  | Specjalista ds. Zapewnienia Jakości; Tester Oprogramowania | 16h | 1,600 |
| 109 | 6 | **Iteracja 6 - Wprowadzenie projektu** | 12.6d? | 2024-06-14 | 2024-06-26 | 85 | 0d |  | Administrator Baz Danych; Kierownik Projektu; Programista; Tester Oprogramowania; Specjalista ds. Zapewnienia Jakości | 748h | 72,800 |
| 110 | 6.1 | **Projektowanie** | 3.2d | 2024-06-14 | 2024-06-18 |  | 0.8d | 0d | Administrator Baz Danych; Kierownik Projektu; Programista; Tester Oprogramowania | 168h | 16,800 |
| 111 | 6.1.1 | **Informacja zwrotna** | 3.2d | 2024-06-14 | 2024-06-18 |  | 0.8d |  | Kierownik Projektu; Administrator Baz Danych; Programista; Tester Oprogramowania | 104h | 10,400 |
| 112 | 6.1.1.1 | Zdefiniowanie wymaganych modyfikacji | 1.6d | 2024-06-14 | 2024-06-17 |  | 0.8d | 0d | Administrator Baz Danych; Kierownik Projektu; Programista; Tester Oprogramowania | 32h | 3,200 |
| 113 | 6.1.1.2 | Akceptacja użytkownika | 1.6d | 2024-06-17 | 2024-06-18 | 112 | 0.8d |  | Kierownik Projektu | 8h | 800 |
| 114 | 6.2 | **Implementacja** | 1.6d? | 2024-06-18 | 2024-06-19 | 110 | 0.8d | 0d | Administrator Baz Danych; Programista | 32h | 2,880 |
| 115 | 6.2.1 | Implementacja modyfikacji określonych przez użytkownika | 1.6d? | 2024-06-18 | 2024-06-19 |  | 0.8d |  | Administrator Baz Danych; Programista | 16h | 1,440 |

| ID | WBS | Task | Duration | Start | Finish | Predecessors | Total slack | Constraint | Resources | Work | Cost |
| --- | --- | --- | --- | --- | --- | --- | --- | --- | --- | --- | --- |
| 116 | 6.3 | **Zapewnienie jakości** | 5.8d | 2024-06-19 | 2024-06-25 | 114 | 0d |  | Specjalista ds. Zapewnienia Jakości; Tester Oprogramowania; Administrator Baz Danych; Kierownik Projektu; Programista [200%] | 225h | 21,600 |
| 117 | 6.3.1 | Wykonaj test integracji | 2.4d | 2024-06-19 | 2024-06-21 |  | 0d |  | Specjalista ds. Zapewnienia Jakości; Tester Oprogramowania | 16h | 1,600 |
| 118 | 6.3.2 | Wykonaj test akceptacji użytkownika | 2.4d | 2024-06-21 | 2024-06-25 | 119SF, 117 | 0d |  | Specjalista ds. Zapewnienia Jakości; Tester Oprogramowania | 16h | 1,600 |
| 119 | 6.3.3 | Uzyskaj akceptację użytkownika | 4.8d | 2024-06-19 | 2024-06-25 |  | 0d | start no earlier than 2024-06-14 | Specjalista ds. Zapewnienia Jakości; Tester Oprogramowania | 32h | 3,200 |
| 120 | 6.4 | **Raporty** | 2d | 2024-06-25 | 2024-06-26 | 116 | 0d |  | Specjalista ds. Zapewnienia Jakości; Tester Oprogramowania | 32h | 3,200 |
| 121 | 6.4.1 | Uzyskaj akceptację użytkownika | 2.4d | 2024-06-25 | 2024-06-26 |  | 0d |  | Specjalista ds. Zapewnienia Jakości; Tester Oprogramowania | 16h | 1,600 |
